# 无锡地铁二号线闸机项目计划表

Schedule from MS Project, 2016-03-01 to 2016-05-20.
Microsoft

## Calendars

- 标准: Mon-Fri 08:00-12:00, 13:00-17:00; Sat-Sun off.

## Resources

| Resource |
| --- |
| 孙昊 |
| 邓霖达 |
| 佟明 |
| 夏金发 |
| 谢强 |
| 外协 |
| 外协 |
| 相关设计人员 |
| 项目组 |
| 胡鹏路 |
| 邱霖 |
| 生产部测试人员 |
| 丁浩喆 |
| 顾勃 |
| 采购部 |
| 汉武智能 |
| 潘旺 |
| 周帅 |
| 彭颖 |
| 虞兵 |
| 彭影 |
| 采购 |

## Schedule

| ID | WBS | Task | Duration | Start | Finish | Predecessors | Baseline start | Baseline finish | Baseline duration | Total slack | Free slack | Constraint | Resources | Work |
| --- | --- | --- | --- | --- | --- | --- | --- | --- | --- | --- | --- | --- | --- | --- |
| 1 | 1 | **桌面POS** | 59d | 2016-03-01 | 2016-05-20 |  | 2013-01-23 | 2013-06-17 | 92d? | 0d |  |  |  | 1240h |
| 2 | 1.1 | **立项阶段** | 15d | 2016-03-01 | 2016-03-21 |  |  |  |  | 44d |  |  |  | 120h |
| 3 | 1.1.1 | **方案设计** | 15d | 2016-03-01 | 2016-03-21 |  |  |  |  | 44d |  |  |  | 120h |
| 4 | 1.1.1.1 | 总体方案设计编写 | 4d | 2016-03-01 | 2016-03-04 |  |  |  |  | 80d | 0d | start no earlier than 2016-03-01 | 周帅 | 32h |
| 5 | 1.1.1.2 | 系统定制化设计方案 | 11d | 2016-03-07 | 2016-03-21 | 4 |  |  |  | 44d |  | finish no earlier than 2016-03-21 | 周帅 | 88h |
| 6 | 1.2 | **需求阶段** | 6d | 2016-03-04 | 2016-03-11 |  |  |  |  | 50d |  |  |  |  |
| 7 | 1.2.1 | 软、硬件需求 | 6d | 2016-03-04 | 2016-03-11 |  |  |  |  | 69d |  | start no earlier than 2016-03-04 |  |  |
| 8 | 1.3 | **设计阶段** | 46d | 2016-03-14 | 2016-05-16 |  |  |  |  | 4d |  |  |  | 944h |
| 9 | 1.3.1 | **结构设计** | 30d | 2016-03-17 | 2016-04-27 |  |  |  |  | 15d |  |  |  | 160h |
| 10 | 1.3.1.1 | 外壳测绘 | 10d | 2016-03-17 | 2016-03-30 |  |  |  |  | 15d | 0d | start no earlier than 2016-03-17 | 虞兵 | 80h |
| 11 | 1.3.1.2 | 外壳修改 | 10d | 2016-03-31 | 2016-04-13 | 10 |  |  |  | 15d | 0d | start no earlier than 2016-03-14 | 虞兵 | 80h |
| 12 | 1.3.1.3 | 外壳开模(快速成型) | 10d | 2016-04-14 | 2016-04-27 | 11 |  |  |  | 17d |  | start no earlier than 2016-04-01 |  |  |
| 14 | 1.3.2 | **工艺设计** | 8d | 2016-05-05 | 2016-05-16 |  |  |  |  | 4d |  |  |  | 64h |
| 15 | 1.3.2.1 | 工艺制作 | 8d | 2016-05-05 | 2016-05-16 |  |  |  |  | 4d |  | start no earlier than 2016-05-05 | 彭影 | 64h |
| 17 | 1.3.3 | **电路设计** | 38d | 2016-03-14 | 2016-05-04 |  |  |  |  | 12d |  |  |  | 352h |
| 18 | 1.3.3.1 | 电路原理图设计第一版(模块选型) | 5d | 2016-03-14 | 2016-03-18 |  |  |  |  | 18d | 0d | start no earlier than 2016-03-14 | 邓霖达 | 40h |
| 19 | 1.3.3.2 | 元器件采购 | 9d | 2016-03-18 | 2016-03-30 |  |  |  |  | 37d |  | start no earlier than 2016-03-18 | 采购部 | 72h |
| 20 | 1.3.3.3 | 电路板pcb设计 | 15d | 2016-03-21 | 2016-04-08 | 18 |  |  |  | 18d | 0d | start no earlier than 2016-02-05 | 邓霖达 | 120h |
| 21 | 1.3.3.4 | 电路板焊接 | 12d | 2016-04-11 | 2016-04-26 | 20 |  |  |  | 18d |  |  |  |  |
| 22 | 1.3.3.5 | 电路设计第二版(电路板形状定型) | 5d | 2016-04-14 | 2016-04-20 | 11 |  |  |  | 15d | 0d | finish no earlier than 2016-03-16 | 邓霖达 | 40h |
| 23 | 1.3.3.6 | 电路板生产焊接 | 10d | 2016-04-21 | 2016-05-04 | 22 |  |  |  | 15d | 0d | finish no earlier than 2016-03-16 | 邓霖达 | 80h |
| 24 | 1.3.4 | **软件设计** | 30d | 2016-04-01 | 2016-05-12 |  |  |  |  | 0d |  |  |  | 368h |
| 25 | 1.3.4.1 | 驱动软件设计 | 16d | 2016-04-01 | 2016-04-22 |  |  |  |  | 17d | 0d | start no earlier than 2016-04-01 | 周帅 | 128h |
| 26 | 1.3.4.2 | 软件设计 | 30d | 2016-04-01 | 2016-05-12 |  |  |  |  | 0d |  | start no earlier than 2016-04-01 | 周帅 | 240h |

| ID | WBS | Task | Duration | Start | Finish | Predecessors | Total slack | Constraint | Resources | Work |
| --- | --- | --- | --- | --- | --- | --- | --- | --- | --- | --- |
| 28 | 1.4 | **测试阶段** | 11d | 2016-04-25 | 2016-05-09 |  | 9d |  |  | 136h |
| 29 | 1.4.1 | **测试** | 11d | 2016-04-25 | 2016-05-09 |  | 9d |  | 周帅 | 136h |
| 30 | 1.4.1.1 | 第一版电路板功能测试 | 3d | 2016-04-25 | 2016-04-27 | 25 | 17d | start no earlier than 2016-02-05 | 周帅 | 24h |
| 31 | 1.4.1.2 | 第二版电路板功能测试(装机测试) | 3d | 2016-05-05 | 2016-05-09 | 23 | 9d | start no earlier than 2016-02-05 | 周帅 | 24h |
| 32 | 1.5 | **联调阶段** | 7d | 2016-05-12 | 2016-05-20 |  | 0d |  |  |  |
| 33 | 1.5.1 | 联调 | 7d | 2016-05-12 | 2016-05-20 | 26 | 0d | start no earlier than 2016-05-12 |  |  |
| 34 | 1.6 | **验收阶段** | 6d | 2016-05-13 | 2016-05-20 |  | 0d |  |  | 40h |
| 35 | 1.6.1 | **设计归档** | 6d | 2016-05-13 | 2016-05-20 |  | 0d |  |  | 40h |
| 36 | 1.6.1.1 | 软件定版 | 1d | 2016-05-13 | 2016-05-13 | 26 | 0d |  | 周帅 | 8h |
| 37 | 1.6.1.2 | 产品定型 | 1d | 2016-05-16 | 2016-05-16 | 36 | 0d |  |  |  |
| 38 | 1.6.1.3 | 文档整理 | 1d | 2016-05-17 | 2016-05-17 | 37 | 0d | start no earlier than 2016-05-10 | 周帅 | 8h |
| 39 | 1.6.1.4 | 资料存档 | 3d | 2016-05-18 | 2016-05-20 | 38 | 0d |  | 周帅 | 24h |
